How a schedule from MS Project changed from version to version. A marks actual dates.

## Version 1 (saved 2012-09-12, file Graphic 2012-09-12 15-58.mpp)

| ID | WBS | Task | Duration | Start | Finish | Predecessors | Complete | Total float | Constraint |
| --- | --- | --- | --- | --- | --- | --- | --- | --- | --- |
| 1 | 1 | **Этап 1** | 65.5d? | 2012-09-04 A | 2012-12-04 |  | 14% | 0d |  |
| 2 |  | Этап 1 | 0d? | 2012-09-04 | 2012-09-04 |  |  | 0d | must start on 2012-09-04 |
| 3 | 1.2 | **MS Administrator** | 65.5d? | 2012-09-04 A | 2012-12-04 |  | 12% | 0d |  |
| 4 |  | Управление пользователями | 2d | 2012-09-04 | 2012-09-06 |  |  | 62.5d |  |
| 5 |  | Управление привилегиями пользователей | 1d | 2012-09-06 | 2012-09-07 | 4 |  | 62.5d |  |
| 6 |  | Авторизация пользователя | 2d | 2012-09-12 A | 2012-09-14 A | 5 | 100% |  |  |
| 7 | 1.2.4 | **Точки трансляции** | 31.88d | 2012-09-04 A | 2012-10-17 |  | 33% | 18.62d |  |
| 8 |  | Управление иерархической структурой Группы точек трансляций | 9.88d | 2012-09-04 A | 2012-09-17 | 31 | 51% | 24.12d |  |
| 9 |  | Управление точкой трансляции | 21.88d | 2012-09-18 A | 2012-10-17 | 8 | 25% | 18.62d |  |
| 10 |  | Управление медиа данными | 11d | 2012-09-19 | 2012-10-04 | 35 |  | 0d |  |
| 11 |  | Управления медиа группами | 10d | 2012-10-04 | 2012-10-18 | 10 |  | 0d |  |
| 12 | 1.2.7 | **Управление расписаниями трансляций** | 13d? | 2012-09-18 | 2012-10-05 |  |  | 24.5d |  |
| 13 |  | Создание нового расписания трансляции | 2d | 2012-09-18 | 2012-09-20 | 25 |  | 24.5d | start no earlier than 2012-09-12 |
| 14 |  | Редактирование нового расписания трансляции | 1d | 2012-09-20 | 2012-09-21 | 13 |  | 24.5d |  |
| 15 |  | Добавление элемента в расписание трансляции | 4d | 2012-09-21 | 2012-09-27 | 14 |  | 24.5d |  |
| 16 |  | Редактирование элемента в расписании трансляции | 2d | 2012-09-27 | 2012-10-01 | 15 |  | 24.5d |  |
| 17 |  | Анализ последовательности расписания трансляции | 3d? | 2012-10-01 | 2012-10-04 | 16 |  | 24.5d |  |
| 18 |  | Удаление элемента расписания трансляции | 1d | 2012-10-04 | 2012-10-05 | 17 |  | 24.5d |  |
| 19 | 1.2.8 | **Управление экстренными трансляциями** | 10d | 2012-10-18 | 2012-10-31 |  |  | 18.62d |  |
| 20 |  | Экстренная трансляция | 10d | 2012-10-18 | 2012-10-31 | 9 |  | 18.62d |  |
| 21 | 1.2.9 | **Отчеты** | 57.5d | 2012-09-14 | 2012-12-04 |  |  | 0d |  |
| 22 |  | По операциям | 4d | 2012-10-10 | 2012-10-16 | 33 |  | 24.5d |  |
| 23 |  | Отчет по трансляциям | 8d | 2012-11-22 | 2012-12-04 | 42 |  | 0d |  |
| 24 |  | Отчет о доставке медиа файлов | 7d | 2012-10-18 | 2012-10-29 | 11 |  | 0d |  |
| 25 |  | Отчет о входе и выходе пользователей | 2d | 2012-09-14 | 2012-09-18 | 6 |  | 24.5d |  |
| 26 |  | Отчет об управлении точек трансляций | 5d | 2012-11-01 | 2012-11-07 | 19 |  | 18.62d | start no earlier than 2012-10-02 |
| 27 | 1.3 | **MS Server** | 26d | 2012-09-04 A | 2012-10-10 |  | 48% | 24.5d |  |
| 28 |  | Установка баз данных | 0.5d | 2012-09-04 A | 2012-09-04 A |  | 100% |  |  |
| 29 |  | Функциональность для подключения и управления данными в БД | 3d | 2012-09-04 A | 2012-09-07 A | 28 | 100% |  |  |
| 30 |  | Функционалность для приема и фильтрации запросов поступаюших на сервер | 3d | 2012-09-07 A | 2012-09-12 A | 29 | 100% |  |  |
| 31 |  | Установка FTP сервера | 1d | 2012-09-04 A | 2012-09-05 A |  | 100% |  |  |
| 32 |  | Функциональность для генерации файлового описания расписания | 2d | 2012-10-05 | 2012-10-09 | 18 |  | 24.5d |  |
| 33 |  | Функциональность для отправки файлового описания расписания на точку трансляции | 1d | 2012-10-09 | 2012-10-10 | 32 |  | 24.5d |  |
| 34 |  | Функциональность для добавления медиа файлов на сервер | 2d | 2012-09-12 | 2012-09-14 | 30 |  | 0d |  |
| 35 |  | Функциональность для отправления медиа файлов с сервер на точки трансляции | 3d | 2012-09-14 | 2012-09-19 | 34 |  | 0d |  |
| 36 | 1.4 | **MS Broadcaster** | 27.5d | 2012-10-16 | 2012-11-22 |  |  | 8d |  |
| 37 | 1.4.1 | **Создание медия плеера** | 8d | 2012-10-29 | 2012-11-08 |  |  | 0d |  |
| 38 |  | Функциональность для вещания медиа файлов (Audio, Video,Фото) | 5d | 2012-10-29 | 2012-11-05 | 24 |  | 0d |  |
| 39 |  | "Running Text" | 3d | 2012-11-05 | 2012-11-08 | 38 |  | 0d |  |
| 40 |  | Генерация суточного графика | 5d | 2012-10-16 | 2012-10-23 | 22 |  | 24.5d |  |
| 41 |  | Функциональность проведения трансляции по суточному графику | 5d | 2012-10-23 | 2012-10-30 | 40 |  | 24.5d |  |
| 42 |  | Функциональность управление экстренными трансляциями | 2d | 2012-11-20 | 2012-11-22 | 39 |  | 0d |  |
| 43 |  | Назначения структуры расписания | 0.5d | 2012-10-30 | 2012-10-30 | 41 |  | 24.5d |  |
| 44 |  | Назначения структуры графика вещания | 0.5d | 2012-10-30 | 2012-10-31 | 43 |  | 24.5d |  |

## Version 2 (saved 2012-09-24, file qrafik - RU_2012-09-24 10-10.mpp)

Last finish stays 2012-12-04. Complete tasks 5 → 11.

Changed:

| ID | Task | Start | Finish | Duration | Complete | Total float | Predecessors | Other |
| --- | --- | --- | --- | --- | --- | --- | --- | --- |
| 1 | **Этап 1** |  |  | 65.5d? → 66d? | 14% → 26% |  |  |  |
| 2 | Этап 1 | 2012-09-04 A | 2012-09-04 A |  | 0% → 100% | 0d → none |  |  |
| 3 | **MS Administrator** |  |  | 65.5d? → 66d? | 12% → 23% |  |  |  |
| 4 | Управление пользователями | 2012-09-04 A | 2012-09-06 A |  | 0% → 100% | 62.5d → none |  |  |
| 5 | Управление привилегиями пользователей | 2012-09-06 A | 2012-09-07 → 2012-09-18 A (+11d) |  | 0% → 100% | 62.5d → none |  |  |
| 6 | Авторизация пользователя |  |  |  |  |  | 5 → none |  |
| 7 | **Точки трансляции** |  |  |  | 33% → 46% | 18.62d → 19.12d |  |  |
| 8 | Управление иерархической структурой Группы точек трансляций |  | 2012-09-17 → 2012-09-20 (+3d) |  | 51% → 80% | 24.12d → 22.81d |  |  |
| 9 | Управление точкой трансляции |  |  |  | 25% → 30% | 18.62d → 19.12d |  |  |
| 10 | Управление медиа данными | 2012-09-19 → 2012-09-20 A (+1d) |  |  | 0% → 15% |  |  |  |
| 11 | Управления медиа группами | 2012-10-04 → 2012-10-05 (+1d) |  |  |  |  |  |  |
| 12 | **Управление расписаниями трансляций** | 2012-09-18 → 2012-09-20 A (+2d) | 2012-10-05 → 2012-10-08 (+3d) |  | 0% → 8% | 24.5d → 23d |  |  |
| 13 | Создание нового расписания трансляции | 2012-09-18 → 2012-09-20 A (+2d) | 2012-09-20 → 2012-09-21 (+1d) |  | 0% → 50% | 24.5d → 23d |  |  |
| 14 | Редактирование нового расписания трансляции | 2012-09-20 → 2012-09-24 (+4d) | 2012-09-21 → 2012-09-24 (+3d) |  |  | 24.5d → 23d |  |  |
| 15 | Добавление элемента в расписание трансляции | 2012-09-21 → 2012-09-25 (+4d) | 2012-09-27 → 2012-09-28 (+1d) |  |  | 24.5d → 23d |  |  |
| 16 | Редактирование элемента в расписании трансляции | 2012-09-27 → 2012-10-01 (+4d) | 2012-10-01 → 2012-10-02 (+1d) |  |  | 24.5d → 23d |  |  |
| 17 | Анализ последовательности расписания трансляции | 2012-10-01 → 2012-10-03 (+2d) | 2012-10-04 → 2012-10-05 (+1d) |  |  | 24.5d → 23d |  |  |
| 18 | Удаление элемента расписания трансляции | 2012-10-04 → 2012-10-08 (+4d) | 2012-10-05 → 2012-10-08 (+3d) |  |  | 24.5d → 23d |  |  |
| 19 | **Управление экстренными трансляциями** |  |  | 10d → 9.88d |  | 18.62d → 19d |  |  |
| 21 | **Отчеты** | 2012-09-14 A |  | 57.5d → 58d | 0% → 8% |  |  |  |
| 22 | По операциям | 2012-10-10 → 2012-10-12 (+2d) | 2012-10-16 → 2012-10-17 (+1d) |  |  | 24.5d → 23d |  |  |
| 23 | Отчет по трансляциям | 2012-11-22 → 2012-11-23 (+1d) |  |  |  |  |  |  |
| 24 | Отчет о доставке медиа файлов | 2012-10-18 → 2012-10-19 (+1d) |  |  |  |  |  |  |
| 25 | Отчет о входе и выходе пользователей | 2012-09-14 A | 2012-09-18 → 2012-09-19 A (+1d) |  | 0% → 100% | 24.5d → none |  |  |
| 27 | **MS Server** |  | 2012-10-10 → 2012-10-11 (+1d) | 26d → 28d | 48% → 81% | 24.5d → 23d |  |  |
| 32 | Функциональность для генерации файлового описания расписания | 2012-10-05 → 2012-10-09 (+4d) | 2012-10-09 → 2012-10-10 (+1d) |  |  | 24.5d → 23d |  |  |
| 33 | Функциональность для отправки файлового описания расписания на точку трансляции | 2012-10-09 → 2012-10-11 (+2d) | 2012-10-10 → 2012-10-11 (+1d) |  |  | 24.5d → 23d |  |  |
| 34 | Функциональность для добавления медиа файлов на сервер | 2012-09-12 A | 2012-09-14 A |  | 0% → 100% | 0d → none |  |  |
| 35 | Функциональность для отправления медиа файлов с сервер на точки трансляции | 2012-09-14 → 2012-09-17 A (+3d) | 2012-09-19 A |  | 0% → 100% | 0d → none |  | constraint none → start no earlier than 2012-09-17 |
| 36 | **MS Broadcaster** | 2012-10-16 → 2012-10-18 (+2d) |  | 27.5d → 26d |  |  |  |  |
| 37 | **Создание медия плеера** | 2012-10-29 → 2012-10-30 (+1d) |  |  |  |  |  |  |
| 38 | Функциональность для вещания медиа файлов (Audio, Video,Фото) | 2012-10-29 → 2012-10-30 (+1d) |  |  |  |  |  |  |
| 39 | "Running Text" | 2012-11-05 → 2012-11-06 (+1d) |  |  |  |  |  |  |
| 40 | Генерация суточного графика | 2012-10-16 → 2012-10-18 (+2d) | 2012-10-23 → 2012-10-24 (+1d) |  |  | 24.5d → 23d |  |  |
| 41 | Функциональность проведения трансляции по суточному графику | 2012-10-23 → 2012-10-25 (+2d) | 2012-10-30 → 2012-10-31 (+1d) |  |  | 24.5d → 23d |  |  |
| 42 | Функциональность управление экстренными трансляциями | 2012-11-20 → 2012-11-21 (+1d) |  |  |  |  |  |  |
| 43 | Назначения структуры расписания | 2012-10-30 → 2012-11-01 (+2d) | 2012-10-30 → 2012-11-01 (+2d) |  |  | 24.5d → 23d |  |  |
| 44 | Назначения структуры графика вещания | 2012-10-30 → 2012-11-01 (+2d) | 2012-10-31 → 2012-11-01 (+1d) |  |  | 24.5d → 23d |  |  |
